# Music Solution Hub

Schedule from MS Project XML, 2023-12-25 to 2026-01-26, A marks actual dates.

## Calendars

- Standard: Mon-Fri 08:00-12:00, 13:00-17:00; Sat-Sun off.

## Resources

| Resource |
| --- |
| BE-1 |
| BE-2 |
| FE-1 |
| FE-2 |
| QA-1 |
| DevOps-1 |

## Schedule

| ID | WBS | Task | Duration | Start | Finish | Predecessors | Remaining | Total slack | Constraint | Resources | Work |
| --- | --- | --- | --- | --- | --- | --- | --- | --- | --- | --- | --- |
| 1 | 1 | **Music Solution Hub** | 546d | 2023-12-25 A | 2026-01-26 |  | 546d | 0d |  |  | 57048h |
| 2 | 1.1 | **Development** | 419d | 2023-12-25 A | 2025-07-31 |  | 419d | 0d |  | BE-1; BE-2; FE-1; FE-2; QA-1; DevOps-1 | 54352h |
| 3 | 1.1.1 | **User Account and Profiles** | 97d | 2023-12-25 A | 2024-05-07 |  | 97d | 0d |  |  | 1760h |
| 4 | 1.1.1.1 | **REST API** | 44d | 2023-12-25 A | 2024-02-22 |  | 44d | 0d |  | BE-1 | 800h |
| 5 | 1.1.1.1.1 | Login | 4d | 2023-12-25 A | 2023-12-28 |  | 4d | 0d |  | BE-1 | 32h |
| 6 | 1.1.1.1.2 | Registration | 4d | 2023-12-29 A | 2024-01-03 | 5 | 4d | 0d | start no earlier than 2023-12-25 | BE-1 | 32h |
| 7 | 1.1.1.1.3 | **Musician** | 12d | 2024-01-04 A | 2024-01-19 |  | 12d | 0d |  | BE-1 | 192h |
| 8 | 1.1.1.1.3.1 | Band Musician Profile | 6d | 2024-01-04 A | 2024-01-11 | 6 | 6d | 0d |  | BE-1 | 48h |
| 9 | 1.1.1.1.3.2 | Solo Musician Profile | 6d | 2024-01-12 A | 2024-01-19 | 8 | 6d | 0d |  | BE-1 | 48h |
| 10 | 1.1.1.1.4 | Studio Profile | 6d | 2024-01-22 A | 2024-01-29 | 9 | 6d | 0d |  | BE-1 | 48h |
| 11 | 1.1.1.1.5 | Practice Pad profile | 6d | 2024-01-30 A | 2024-02-06 | 10 | 6d | 0d |  | BE-1 | 48h |
| 12 | 1.1.1.1.6 | Music Shop Profile | 6d | 2024-02-07 A | 2024-02-14 | 11 | 6d | 0d |  | BE-1 | 48h |
| 13 | 1.1.1.1.7 | General User Profile | 6d | 2024-02-15 A | 2024-02-22 | 12 | 6d | 0d |  | BE-1 | 48h |
| 14 | 1.1.1.2 | **Frontend** | 53d | 2024-02-23 A | 2024-05-07 |  | 53d | 0d |  | FE-1 | 960h |
| 15 | 1.1.1.2.1 | Login | 5d | 2024-02-23 A | 2024-02-29 | 13 | 5d | 0d |  | FE-1 | 40h |
| 16 | 1.1.1.2.2 | Registration | 6d | 2024-03-01 A | 2024-03-08 | 15 | 6d | 0d |  | FE-1 | 48h |
| 17 | 1.1.1.2.3 | **Musician** | 14d | 2024-03-11 A | 2024-03-28 |  | 14d | 0d |  | FE-1 | 224h |
| 18 | 1.1.1.2.3.1 | Band Musician Profile | 7d | 2024-03-11 A | 2024-03-19 | 16 | 7d | 0d |  | FE-1 | 56h |
| 19 | 1.1.1.2.3.2 | Solo Musician Profile | 7d | 2024-03-20 A | 2024-03-28 | 18 | 7d | 0d |  | FE-1 | 56h |
| 20 | 1.1.1.2.4 | Studio Profile | 7d | 2024-03-29 A | 2024-04-08 | 19 | 7d | 0d |  | FE-1 | 56h |
| 21 | 1.1.1.2.5 | Practice Pad profile | 7d | 2024-04-09 A | 2024-04-17 | 20 | 7d | 0d |  | FE-1 | 56h |
| 22 | 1.1.1.2.6 | Music Shop Profile | 7d | 2024-04-18 A | 2024-04-26 | 21 | 7d | 0d |  | FE-1 | 56h |
| 23 | 1.1.1.2.7 | General User Profile | 7d | 2024-04-29 A | 2024-05-07 | 22 | 7d | 0d |  | FE-1 | 56h |
| 24 | 1.1.2 | **Studio** | 98d | 2023-12-25 A | 2024-05-08 |  | 98d | 0d |  | BE-2; FE-2 | 3352h |
| 25 | 1.1.2.1 | **REST API** | 66d | 2023-12-25 A | 2024-03-25 |  | 66d | 0d |  | BE-2 | 1056h |
| 26 | 1.1.2.1.1 | Dashboard | 7d | 2023-12-25 A | 2024-01-02 |  | 7d | 0d |  | BE-2 | 56h |
| 27 | 1.1.2.1.2 | Read List | 5d | 2024-01-03 A | 2024-01-09 | 26 | 5d | 0d |  | BE-2 | 40h |
| 28 | 1.1.2.1.3 | Update Profile | 7d | 2024-01-10 A | 2024-01-18 | 27 | 7d | 0d |  | BE-2 | 56h |
| 29 | 1.1.2.1.4 | Update Slots , Pricing | 5d | 2024-01-19 A | 2024-01-25 | 28 | 5d | 0d |  | BE-2 | 40h |
| 30 | 1.1.2.1.5 | Upload Image, Video and Details | 5d | 2024-01-26 A | 2024-02-01 | 29 | 5d | 0d |  | BE-2 | 40h |
| 31 | 1.1.2.1.6 | Booking Request Management | 5d | 2024-02-02 A | 2024-02-08 | 30 | 5d | 0d |  | BE-2 | 40h |
| 32 | 1.1.2.1.7 | Review and Comment | 5d | 2024-02-09 A | 2024-02-15 | 31 | 5d | 0d |  | BE-2 | 40h |
| 33 | 1.1.2.1.8 | Search Filter | 10d | 2024-02-16 A | 2024-02-29 | 32 | 10d | 0d |  | BE-2 | 80h |
| 34 | 1.1.2.1.9 | Cart | 7d | 2024-03-01 A | 2024-03-11 | 33 | 7d | 0d |  | BE-2 | 56h |
| 35 | 1.1.2.1.10 | Payment Platform | 10d | 2024-03-12 A | 2024-03-25 | 34 | 10d | 0d |  | BE-2 | 80h |

| ID | WBS | Task | Duration | Start | Finish | Predecessors | Remaining | Total slack | Constraint | Resources | Work |
| --- | --- | --- | --- | --- | --- | --- | --- | --- | --- | --- | --- |
| 36 | 1.1.2.2 | **Frontend** | 54d | 2024-02-23 A | 2024-05-08 |  | 54d | 0d |  | FE-2 | 728h |
| 37 | 1.1.2.2.1 | Dashboard | 4d | 2024-02-23 A | 2024-02-28 |  | 4d | 0d | start no earlier than 2024-02-23 | FE-2 | 32h |
| 38 | 1.1.2.2.2 | List | 4d | 2024-02-29 A | 2024-03-05 | 37 | 4d | 0d |  | FE-2 | 32h |
| 39 | 1.1.2.2.3 | Profile Management | 6d | 2024-03-06 A | 2024-03-13 | 38 | 6d | 0d |  | FE-2 | 48h |
| 40 | 1.1.2.2.4 | Update slots , Pricing | 5d | 2024-03-14 A | 2024-03-20 | 39 | 5d | 0d |  | FE-2 | 40h |
| 41 | 1.1.2.2.5 | Cart | 7d | 2024-03-21 A | 2024-03-29 | 40 | 7d | 0d |  | FE-2 | 56h |
| 42 | 1.1.2.2.6 | Review and comment | 4d | 2024-04-01 A | 2024-04-04 | 41 | 4d | 0d |  | FE-2 | 32h |
| 43 | 1.1.2.2.7 | Upload Image , Video and details | 7d | 2024-04-05 A | 2024-04-15 | 42 | 7d | 0d |  | FE-2 | 56h |
| 44 | 1.1.2.2.8 | **Request Handling:** | 17d | 2024-04-16 A | 2024-05-08 |  | 17d | 0d |  |  |  |
| 45 | 1.1.2.2.8.1 | Booking Management | 7d | 2024-04-16 A | 2024-04-24 | 43 | 7d | 0d |  |  |  |
| 46 | 1.1.2.2.8.2 | Payment | 10d | 2024-04-25 A | 2024-05-08 | 45 | 10d | 0d |  |  |  |
| 47 | 1.1.3 | **Practice Pad** | 107d | 2024-02-23 A | 2024-07-22 |  | 107d | 0d |  | FE-1; BE-1 | 3256h |
| 48 | 1.1.3.1 | **REST API** | 68d | 2024-02-23 A | 2024-05-28 |  | 68d | 0d |  | BE-1 | 544h |
| 49 | 1.1.3.1.1 | Dashboard | 8d | 2024-02-23 A | 2024-03-05 |  | 8d | 0d | start no earlier than 2024-02-23 |  |  |
| 50 | 1.1.3.1.2 | Read List | 5d | 2024-03-06 A | 2024-03-12 | 49 | 5d | 0d |  |  |  |
| 51 | 1.1.3.1.3 | Update Profile | 8d | 2024-03-13 A | 2024-03-22 | 50 | 8d | 0d |  |  |  |
| 52 | 1.1.3.1.4 | Update Slots,Pricing | 7d | 2024-03-25 A | 2024-04-02 | 51 | 7d | 0d |  |  |  |
| 53 | 1.1.3.1.5 | Review and Comment | 3d | 2024-04-03 A | 2024-04-05 | 52 | 3d | 0d |  |  |  |
| 54 | 1.1.3.1.6 | Upload Image , Video and Details | 5d | 2024-04-08 A | 2024-04-12 | 53 | 5d | 0d |  |  |  |
| 55 | 1.1.3.1.7 | Booking Request Management | 5d | 2024-04-15 A | 2024-04-19 | 54 | 5d | 0d |  |  |  |
| 56 | 1.1.3.1.8 | Search Filter | 10d | 2024-04-22 A | 2024-05-03 | 55 | 10d | 0d |  |  |  |
| 57 | 1.1.3.1.9 | Cart | 7d | 2024-05-06 A | 2024-05-14 | 56 | 7d | 0d |  |  |  |
| 58 | 1.1.3.1.10 | Payment Platform | 10d | 2024-05-15 A | 2024-05-28 | 57 | 10d | 0d |  |  |  |
| 59 | 1.1.3.2 | **Frontend** | 54d | 2024-05-08 A | 2024-07-22 |  | 54d | 0d |  | FE-1 | 1000h |
| 60 | 1.1.3.2.1 | Dashboard | 5d | 2024-05-08 A | 2024-05-14 |  | 5d | 0d | start no earlier than 2024-05-08 | FE-1 | 40h |
| 61 | 1.1.3.2.2 | List | 5d | 2024-05-15 A | 2024-05-21 | 60 | 5d | 0d |  | FE-1 | 40h |
| 62 | 1.1.3.2.3 | Profile management | 7d | 2024-05-22 A | 2024-05-30 | 61 | 7d | 0d |  | FE-1 | 56h |
| 63 | 1.1.3.2.4 | Update Slots,Pricing | 7d | 2024-05-31 A | 2024-06-10 | 62 | 7d | 0d |  | FE-1 | 56h |
| 64 | 1.1.3.2.5 | Cart | 5d | 2024-06-11 A | 2024-06-17 | 63 | 5d | 0d |  | FE-1 | 40h |
| 65 | 1.1.3.2.6 | Review and Comment | 3d | 2024-06-18 A | 2024-06-20 | 64 | 3d | 0d |  | FE-1 | 24h |
| 66 | 1.1.3.2.7 | Upload Image,video and details | 5d | 2024-06-21 A | 2024-06-27 | 65 | 5d | 0d |  | FE-1 | 40h |

| ID | WBS | Task | Duration | Start | Finish | Predecessors | Remaining | Total slack | Constraint | Resources | Work |
| --- | --- | --- | --- | --- | --- | --- | --- | --- | --- | --- | --- |
| 67 | 1.1.3.2.8 | **Request Handling:** | 17d | 2024-06-28 A | 2024-07-22 |  | 17d | 0d |  | FE-1 | 272h |
| 68 | 1.1.3.2.8.1 | Booking Management | 7d | 2024-06-28 A | 2024-07-08 | 66 | 7d | 0d |  | FE-1 | 56h |
| 69 | 1.1.3.2.8.2 | Payment | 10d | 2024-07-09 A | 2024-07-22 | 68 | 10d | 0d |  | FE-1 | 80h |
| 70 | 1.1.4 | **Music Shop** | 76d | 2024-03-26 A | 2024-07-09 |  | 76d | 0d |  | BE-2; FE-2 | 2720h |
| 71 | 1.1.4.1 | **REST API** | 49d | 2024-03-26 A | 2024-05-31 |  | 49d | 0d |  | BE-2 | 784h |
| 72 | 1.1.4.1.1 | Read List | 3d | 2024-03-26 A | 2024-03-28 |  | 3d | 0d | start no earlier than 2024-03-26 | BE-2 | 24h |
| 73 | 1.1.4.1.2 | Search Filter | 10d | 2024-03-29 A | 2024-04-11 | 72 | 10d | 0d |  | BE-2 | 80h |
| 74 | 1.1.4.1.3 | CRUD on Equipment | 8d | 2024-04-12 A | 2024-04-23 | 73 | 8d | 0d |  | BE-2 | 64h |
| 75 | 1.1.4.1.4 | Dashboard | 8d | 2024-04-24 A | 2024-05-03 | 74 | 8d | 0d |  | BE-2 | 64h |
| 76 | 1.1.4.1.5 | Order management | 10d | 2024-05-06 A | 2024-05-17 | 75 | 10d | 0d |  | BE-2 | 80h |
| 77 | 1.1.4.1.6 | Payment | 10d | 2024-05-20 A | 2024-05-31 | 76 | 10d | 0d |  | BE-2 | 80h |
| 78 | 1.1.4.2 | **Frontend** | 45d | 2024-05-08 A | 2024-07-09 |  | 45d | 0d |  | FE-2 | 720h |
| 79 | 1.1.4.2.1 | List of Shops | 10d | 2024-05-08 A | 2024-05-21 |  | 10d | 0d | start no earlier than 2024-05-08 | FE-2 | 80h |
| 80 | 1.1.4.2.2 | CRUD options for Equipments | 7d | 2024-05-22 A | 2024-05-30 | 79 | 7d | 0d |  | FE-2 | 56h |
| 81 | 1.1.4.2.3 | Dashboard | 8d | 2024-05-31 A | 2024-06-11 | 80 | 8d | 0d |  | FE-2 | 64h |
| 82 | 1.1.4.2.4 | Order management | 10d | 2024-06-12 A | 2024-06-25 | 81 | 10d | 0d |  | FE-2 | 80h |
| 83 | 1.1.4.2.5 | Payment | 10d | 2024-06-26 A | 2024-07-09 | 82 | 10d | 0d |  | FE-2 | 80h |
| 84 | 1.1.5 | **Event Management** | 93d | 2024-05-28 A | 2024-10-03 |  | 93d | 0d |  | BE-1; FE-1 | 2928h |
| 85 | 1.1.5.1 | **REST API** | 58d | 2024-05-28 A | 2024-08-15 |  | 58d | 0d |  | BE-1 | 1008h |
| 86 | 1.1.5.1.1 | Search Filter | 10d | 2024-05-28 A | 2024-06-10 |  | 10d | 0d | start no earlier than 2024-05-28 | BE-1 | 80h |
| 87 | 1.1.5.1.2 | Dashboard | 8d | 2024-06-11 A | 2024-06-20 | 86 | 8d | 0d |  | BE-1 | 64h |
| 88 | 1.1.5.1.3 | **Launch Event** | 10d | 2024-06-21 A | 2024-07-04 |  | 10d | 0d |  | BE-1 | 160h |
| 89 | 1.1.5.1.3.1 | Ticket and Pricing Setup | 10d | 2024-06-21 A | 2024-07-04 | 87 | 10d | 0d |  | BE-1 | 80h |
| 90 | 1.1.5.1.4 | Cart | 10d | 2024-07-05 A | 2024-07-18 | 89 | 10d | 0d |  | BE-1 | 80h |
| 91 | 1.1.5.1.5 | Event List | 10d | 2024-07-19 A | 2024-08-01 | 90 | 10d | 0d |  | BE-1 | 80h |
| 92 | 1.1.5.1.6 | Ticket and Setup | 10d | 2024-08-02 A | 2024-08-15 | 91 | 10d | 0d |  | BE-1 | 80h |

| ID | WBS | Task | Duration | Start | Finish | Predecessors | Remaining | Total slack | Constraint | Resources | Work |
| --- | --- | --- | --- | --- | --- | --- | --- | --- | --- | --- | --- |
| 93 | 1.1.5.2 | **Frontend** | 54d | 2024-07-22 A | 2024-10-03 |  | 54d | 0d |  | FE-1 | 432h |
| 94 | 1.1.5.2.1 | Event List | 12d | 2024-07-22 A | 2024-08-06 |  | 12d | 0d | start no earlier than 2024-07-22 |  |  |
| 95 | 1.1.5.2.2 | Dashboard | 12d | 2024-08-07 A | 2024-08-22 | 94 | 12d | 0d |  |  |  |
| 96 | 1.1.5.2.3 | Cart | 15d | 2024-08-23 A | 2024-09-12 | 95 | 15d | 0d |  |  |  |
| 97 | 1.1.5.2.4 | **Launch Event** | 15d | 2024-09-13 A | 2024-10-03 |  | 15d | 0d |  |  |  |
| 98 | 1.1.5.2.4.1 | Ticket and Setup | 15d | 2024-09-13 A | 2024-10-03 | 96 | 15d | 0d |  |  |  |
| 99 | 1.1.6 | **Musician/Band** | 193d | 2024-06-03 A | 2025-02-26 |  | 193d | 0d |  | BE-2; FE-2 | 8536h |
| 100 | 1.1.6.1 | **REST API** | 139d | 2024-06-03 A | 2024-12-12 |  | 139d | 0d |  | BE-2 | 2224h |
| 101 | 1.1.6.1.1 | Search Filter | 10d | 2024-06-03 A | 2024-06-14 |  | 10d | 0d | start no earlier than 2024-06-01 | BE-1 | 80h |
| 102 | 1.1.6.1.2 | Dashboard | 7d | 2024-06-17 A | 2024-06-25 | 101 | 7d | 0d |  | BE-1 | 56h |
| 103 | 1.1.6.1.3 | Profile Management | 7d | 2024-06-26 A | 2024-07-04 | 102 | 7d | 0d |  | BE-1 | 56h |
| 104 | 1.1.6.1.4 | Read List of Musician | 10d | 2024-07-05 A | 2024-07-18 | 103 | 10d | 0d |  | BE-1 | 80h |
| 105 | 1.1.6.1.5 | Upload | 10d | 2024-07-19 A | 2024-08-01 | 104 | 10d | 0d |  | BE-1 | 80h |
| 106 | 1.1.6.1.6 | List Equipment for Sell or Rent | 7d | 2024-08-02 A | 2024-08-12 | 105 | 7d | 0d |  | BE-1 | 56h |
| 107 | 1.1.6.1.7 | Tracklist | 10d | 2024-08-13 A | 2024-08-26 | 106 | 10d | 0d |  | BE-1 | 80h |
| 108 | 1.1.6.1.8 | Cart | 15d | 2024-08-27 A | 2024-09-16 | 107 | 15d | 0d |  | BE-1 | 120h |
| 109 | 1.1.6.1.9 | Booking Management | 12d | 2024-09-17 A | 2024-10-02 | 108 | 12d | 0d |  | BE-1 | 96h |
| 110 | 1.1.6.1.10 | Schedule update | 7d | 2024-10-03 A | 2024-10-11 | 109 | 7d | 0d |  | BE-1 | 56h |
| 111 | 1.1.6.1.11 | Pricing and Package | 7d | 2024-10-14 A | 2024-10-22 | 110 | 7d | 0d |  | BE-1 | 56h |
| 112 | 1.1.6.1.12 | Payment Platform | 15d | 2024-10-23 A | 2024-11-12 | 111 | 15d | 0d |  | BE-1 | 120h |
| 113 | 1.1.6.1.13 | Review and comment | 7d | 2024-11-13 A | 2024-11-21 | 112 | 7d | 0d |  | BE-1 | 56h |
| 114 | 1.1.6.1.14 | Rent Request Management | 15d | 2024-11-22 A | 2024-12-12 | 113 | 15d | 0d |  | BE-1 | 120h |
| 115 | 1.1.6.2 | **Frontend** | 167d | 2024-07-09 A | 2025-02-26 |  | 167d | 0d |  | FE-2 | 3224h |
| 116 | 1.1.6.2.1 | Dashboard | 12d | 2024-07-09 A | 2024-07-24 |  | 12d | 0d | start no earlier than 2024-07-09 | FE-2 | 96h |
| 117 | 1.1.6.2.2 | Profile Management | 12d | 2024-07-25 A | 2024-08-09 | 116 | 12d | 0d |  | FE-2 | 96h |
| 118 | 1.1.6.2.3 | See List of musician | 12d | 2024-08-12 A | 2024-08-27 | 117 | 12d | 0d |  | FE-2 | 96h |
| 119 | 1.1.6.2.4 | Upload (image,video,audio) | 15d | 2024-08-28 A | 2024-09-17 | 118 | 15d | 0d |  | FE-2 | 120h |
| 120 | 1.1.6.2.5 | List Equipment for Sell or Rent | 10d | 2024-09-18 A | 2024-10-01 | 119 | 10d | 0d |  | FE-2 | 80h |
| 121 | 1.1.6.2.6 | Cart | 12d | 2024-10-02 A | 2024-10-17 | 120 | 12d | 0d |  | FE-2 | 96h |
| 122 | 1.1.6.2.7 | Review and Comment | 7d | 2024-10-18 A | 2024-10-28 | 121 | 7d | 0d |  | FE-2 | 56h |
| 123 | 1.1.6.2.8 | Rented and Sold Equipment Track | 18d | 2024-10-29 A | 2024-11-21 | 122 | 18d | 0d |  | FE-2 | 144h |

| ID | WBS | Task | Duration | Start | Finish | Predecessors | Remaining | Total slack | Constraint | Resources | Work |
| --- | --- | --- | --- | --- | --- | --- | --- | --- | --- | --- | --- |
| 124 | 1.1.6.2.9 | **Request Handling** | 69d | 2024-11-22 A | 2025-02-26 |  | 69d | 0d |  | FE-2 | 1104h |
| 125 | 1.1.6.2.9.1 | Booking Management | 10d | 2024-11-22 A | 2024-12-05 | 123 | 10d | 0d |  | FE-2 | 80h |
| 126 | 1.1.6.2.9.2 | Lesson | 15d | 2024-12-06 A | 2024-12-26 | 125 | 15d | 0d |  | FE-2 | 120h |
| 127 | 1.1.6.2.9.3 | Schedule update | 10d | 2024-12-27 A | 2025-01-09 | 126 | 10d | 0d |  | FE-2 | 80h |
| 128 | 1.1.6.2.9.4 | Pricing | 7d | 2025-01-10 A | 2025-01-20 | 127 | 7d | 0d |  | FE-2 | 56h |
| 129 | 1.1.6.2.9.5 | Payment | 12d | 2025-01-21 A | 2025-02-05 | 128 | 12d | 0d |  | FE-2 | 96h |
| 130 | 1.1.6.2.9.6 | Rent request management | 15d | 2025-02-06 A | 2025-02-26 | 129 | 15d | 0d |  | FE-2 | 120h |
| 131 | 1.1.7 | **General User/Customer** | 90d | 2024-08-16 A | 2024-12-19 |  | 90d | 0d |  | FE-1; BE-1 | 2992h |
| 132 | 1.1.7.1 | **REST API** | 42d | 2024-08-16 A | 2024-10-14 |  | 42d | 0d |  | BE-1 | 672h |
| 133 | 1.1.7.1.1 | Dashboard | 10d | 2024-08-16 A | 2024-08-29 |  | 10d | 0d | start no earlier than 2024-08-16 | BE-1 | 80h |
| 134 | 1.1.7.1.2 | Profile Management | 10d | 2024-08-30 A | 2024-09-12 | 133 | 10d | 0d |  | BE-1 | 80h |
| 135 | 1.1.7.1.3 | Cart | 15d | 2024-09-13 A | 2024-10-03 | 134 | 15d | 0d |  | BE-1 | 120h |
| 136 | 1.1.7.1.4 | Review and Comment | 7d | 2024-10-04 A | 2024-10-14 | 135 | 7d | 0d |  | BE-1 | 56h |
| 137 | 1.1.7.2 | **Frontend** | 55d | 2024-10-04 A | 2024-12-19 |  | 55d | 0d |  | FE-1 | 880h |
| 138 | 1.1.7.2.1 | Dashboard | 15d | 2024-10-04 A | 2024-10-24 |  | 15d | 0d | start no earlier than 2024-10-04 | FE-1 | 120h |
| 139 | 1.1.7.2.2 | Profile Management | 15d | 2024-10-25 A | 2024-11-14 | 138 | 15d | 0d |  | FE-1 | 120h |
| 140 | 1.1.7.2.3 | Cart | 15d | 2024-11-15 A | 2024-12-05 | 139 | 15d | 0d |  | FE-1 | 120h |
| 141 | 1.1.7.2.4 | Review and comment | 10d | 2024-12-06 A | 2024-12-19 | 140 | 10d | 0d |  | FE-1 | 80h |
| 142 | 1.1.8 | **Technician** | 165d | 2024-12-13 A | 2025-07-31 |  | 165d | 0d |  | BE-2; FE-2 | 5280h |
| 143 | 1.1.8.1 | **REST API** | 85d | 2024-12-13 A | 2025-04-10 |  | 85d | 0d |  | BE-2 | 1360h |
| 144 | 1.1.8.1.1 | Dashboard | 10d | 2024-12-13 A | 2024-12-26 |  | 10d | 0d | start no earlier than 2024-12-13 | BE-2 | 80h |
| 145 | 1.1.8.1.2 | Payment History read | 15d | 2024-12-27 A | 2025-01-16 | 144 | 15d | 0d |  | BE-2 | 120h |
| 146 | 1.1.8.1.3 | Service History Read | 15d | 2025-01-17 A | 2025-02-06 | 145 | 15d | 0d |  | BE-2 | 120h |
| 147 | 1.1.8.1.4 | Service Request | 15d | 2025-02-07 A | 2025-02-27 | 146 | 15d | 0d |  | BE-2 | 120h |
| 148 | 1.1.8.1.5 | Profile Management | 15d | 2025-02-28 A | 2025-03-20 | 147 | 15d | 0d |  | BE-2 | 120h |
| 149 | 1.1.8.1.6 | Progress Track Update | 15d | 2025-03-21 A | 2025-04-10 | 148 | 15d | 0d |  | BE-2 | 120h |

| ID | WBS | Task | Duration | Start | Finish | Predecessors | Remaining | Total slack | Constraint | Resources | Work |
| --- | --- | --- | --- | --- | --- | --- | --- | --- | --- | --- | --- |
| 150 | 1.1.8.2 | **Frontend** | 80d | 2025-04-11 A | 2025-07-31 |  | 80d | 0d |  | FE-2 | 1280h |
| 151 | 1.1.8.2.1 | Dashboard | 10d | 2025-04-11 A | 2025-04-24 | 149 | 10d | 0d |  | FE-2 | 80h |
| 152 | 1.1.8.2.2 | Payment History | 10d | 2025-04-25 A | 2025-05-08 | 151 | 10d | 0d |  | FE-2 | 80h |
| 153 | 1.1.8.2.3 | Service History | 15d | 2025-05-09 A | 2025-05-29 | 152 | 15d | 0d |  | FE-2 | 120h |
| 154 | 1.1.8.2.4 | Service Request | 15d | 2025-05-30 A | 2025-06-19 | 153 | 15d | 0d |  | FE-2 | 120h |
| 155 | 1.1.8.2.5 | Profile Management | 15d | 2025-06-20 A | 2025-07-10 | 154 | 15d | 0d |  | FE-2 | 120h |
| 156 | 1.1.8.2.6 | Track History | 15d | 2025-07-11 A | 2025-07-31 | 155 | 15d | 0d |  | FE-2 | 120h |
| 157 | 1.1.9 | **In-Built Messenger** | 88d | 2024-10-15 A | 2025-02-13 |  | 88d | 0d |  | BE-1; FE-1; FE-2; BE-2 | 10168h |
| 158 | 1.1.9.1 | Backend | 35d | 2024-10-15 A | 2024-12-02 |  | 35d | 0d | start no earlier than 2024-10-15 | BE-1 | 280h |
| 159 | 1.1.9.2 | Frontend | 40d | 2024-12-20 A | 2025-02-13 | 158 | 40d | 0d | start no earlier than 2024-12-20 | FE-1 | 320h |
| 160 | 1.2 | **Testing/QA** | 240d | 2025-02-14 A | 2026-01-15 | 157 | 240d | 0d |  |  | 2640h |
| 161 | 1.2.1 | User Account and Profiles and Studio | 60d | 2025-02-14 A | 2025-05-08 |  | 60d | 0d | start no earlier than 2024-05-08 | QA-1 | 480h |
| 162 | 1.2.2 | Practice Pad | 30d | 2025-05-09 A | 2025-06-19 | 161 | 30d | 0d |  | QA-1 | 240h |
| 163 | 1.2.3 | Music Shop | 20d | 2025-06-20 A | 2025-07-17 | 162 | 20d | 0d |  | QA-1 | 160h |
| 164 | 1.2.4 | Event Management | 20d | 2025-07-18 A | 2025-08-14 | 163 | 20d | 0d |  | QA-1 | 160h |
| 165 | 1.2.5 | Musician/Band | 30d | 2025-08-15 A | 2025-09-25 | 164 | 30d | 0d |  | QA-1 | 240h |
| 166 | 1.2.6 | General User/Customer | 15d | 2025-09-26 A | 2025-10-16 | 165 | 15d | 0d |  | QA-1 | 120h |
| 167 | 1.2.7 | Technician | 15d | 2025-10-17 A | 2025-11-06 | 166 | 15d | 0d |  | QA-1 | 120h |
| 168 | 1.2.8 | In-Built Messenger | 20d | 2025-11-07 A | 2025-12-04 | 167 | 20d | 0d |  | QA-1 | 160h |
| 169 | 1.2.9 | **Bug Fixing** | 30d | 2025-12-05 A | 2026-01-15 | 168 | 30d | 0d |  |  | 960h |
| 170 | 1.2.9.1 | Bug Fix by BE-1 and BE-2 | 30d | 2025-12-05 A | 2026-01-15 |  | 30d | 0d | start no earlier than 2025-12-05 | BE-1; BE-2 | 480h |
| 171 | 1.2.9.2 | Bug Fix by FE-1 and FE-2 | 30d | 2025-12-05 A | 2026-01-15 |  | 30d | 0d |  | FE-1; FE-2 | 480h |
| 172 | 1.3 | Deployment | 7d | 2026-01-16 A | 2026-01-26 | 171 | 7d | 0d |  | DevOps-1 | 56h |
